# infinity-beer

Schedule from ProjectLibre, 2022-01-26 to 2022-05-09.

## Calendars

- Padrão: Mon-Fri 08:00-12:00, 13:00-17:00; Sat-Sun off.

## Resources

| Resource | Rate |
| --- | --- |
| Não atribuído |  |
| Vinícius Bandeira | 70 |
| Eduardo Candido | 70 |
| Programador | 51 |
| Estagiário | 8.5 |
| Montador | 40 |
| Analista | 26 |
| Computador | 4000 |
| Insumos de Escritório | 350 |
| Data Center | 456 |
| Câmera | 400 |
| Project Owner |  |
| Cervejeira | 2500 |
| Roteador | 300 |
| UX Designer | 30 |

## Schedule

| ID | WBS | Task | Duration | Start | Finish | Predecessors | Resources |
| --- | --- | --- | --- | --- | --- | --- | --- |
| 1 | 1 | **Criação Cervejeira Automatizada** | 74d | 2022-01-26 | 2022-05-09 |  |  |
| 2 | 1.1 | **1 - Definição do Projeto** | 9d | 2022-01-26 | 2022-02-07 |  |  |
| 3 | 1.1.1 | Desenho do escopo do projeto | 3d | 2022-01-26 | 2022-01-28 |  | Vinícius Bandeira; Eduardo Candido; Project Owner |
| 4 | 1.1.2 | Levantamento de recursos | 3d | 2022-01-31 | 2022-02-02 | 3 | Vinícius Bandeira; Eduardo Candido |
| 5 | 1.1.3 | Definição de tarefas e prazos | 3d | 2022-02-03 | 2022-02-07 | 4 | Vinícius Bandeira; Eduardo Candido |
| 6 | 1.2 | **2 - Implementação** | 65d | 2022-01-26 | 2022-04-26 |  |  |
| 7 | 1.2.1 | **2.1 - Aquisições** | 4d | 2022-02-08 | 2022-02-11 |  |  |
| 8 | 1.2.1.1 | Aluguel de Data Centers | 1d | 2022-02-08 | 2022-02-08 | 5 | Vinícius Bandeira; Data Center |
| 9 | 1.2.1.2 | Aquisição de Cervejeira e Dispositivos IOT | 3d | 2022-02-09 | 2022-02-11 | 8 | Cervejeira; Vinícius Bandeira [50%]; Câmera [300%]; Roteador; Eduardo Candido [50%] |
| 10 | 1.2.2 | **2.2 - Desenvolvimento** | 65d | 2022-01-26 | 2022-04-26 |  |  |
| 11 | 1.2.2.1 | **2.2.1 - Front-end** | 43d | 2022-02-08 | 2022-04-07 |  |  |
| 12 | 1.2.2.1.1 | Desenho das telas do aplicativo | 7d | 2022-02-08 | 2022-02-16 | 5 | UX Designer; Computador; Insumos de Escritório |
| 13 | 1.2.2.1.2 | Validação das telas | 1d | 2022-02-17 | 2022-02-17 | 12 | Vinícius Bandeira; Eduardo Candido |
| 14 | 1.2.2.1.3 | Criação do aplicativo mobile | 35d | 2022-02-18 | 2022-04-07 | 13 | Computador; Programador |
| 15 | 1.2.2.2 | **2.2.2 - Back-end** | 31d | 2022-02-09 | 2022-03-23 |  |  |
| 16 | 1.2.2.2.1 | Criação do banco de dados dentro da AWS | 2d | 2022-02-09 | 2022-02-10 | 5, 8 | Analista; Computador; Data Center |
| 17 | 1.2.2.2.2 | Configuração das câmeras no AWS Kinesis | 8d | 2022-02-11 | 2022-02-22 | 16 | Analista; Computador; Data Center |
| 18 | 1.2.2.2.3 | Estruturação da arquitetura serverless com AWS EventBridge | 7d | 2022-02-23 | 2022-03-03 | 17 | Programador; Computador; Data Center |
| 19 | 1.2.2.2.4 | Estabelecendo comunicação com AWS Lambda | 7d | 2022-03-04 | 2022-03-14 | 18 | Programador; Computador; Data Center |
| 20 | 1.2.2.2.5 | Criação de evento para nível baixo da cervejeira | 7d | 2022-03-15 | 2022-03-23 | 19 | Programador; Computador; Data Center |
| 21 | 1.2.2.3 | Vinculação do Back-end e Front-end | 4d | 2022-04-08 | 2022-04-13 | 14, 20 | Estagiário [50%]; Analista [50%]; Computador |
| 22 | 1.2.2.4 | **2.2.3 - Montagem e Treinamento** | 65d | 2022-01-26 | 2022-04-26 |  |  |
| 23 | 1.2.2.4.1 | Montagem do protótipo da cervejeira | 3d | 2022-01-26 | 2022-01-28 |  | Montador; Cervejeira; Roteador; Câmera [300%]; Vinícius Bandeira [20%]; Eduardo Candido [20%] |
| 24 | 1.2.2.4.2 | Treinamento de IA para as câmeras | 7d | 2022-04-14 | 2022-04-22 | 23, 21 | Vinícius Bandeira [20%]; Eduardo Candido [20%]; Estagiário; Analista [30%]; Computador |
| 25 | 1.2.2.4.3 | Teste de precisão da IA | 1d | 2022-04-25 | 2022-04-25 | 24 | Vinícius Bandeira [23.33%]; Analista [58.33%]; Estagiário [58.33%]; Computador; Cervejeira; Data Center |
| 26 | 1.2.2.4.4 | Teste de notificação de nível baixo da cervejeira | 1d | 2022-04-26 | 2022-04-26 | 25 | Cervejeira; Programador [25%]; Eduardo Candido [25%]; Estagiário [50%] |

Notes:
- 8: O valor do aluguel está como Material por se tratar de um valor fixo na atual situação. Se o trabalho fosse colocado como Trabalho para realmente ser cobrado durante um determinado período, a duração do aluguel interferia de forma direta e errônea a duração total do projeto. O cálculo base foi de 76 dias (duração total do projeto) x 24 horas, com a hora custando R$ 0,25 totalizando R$456.

| ID | WBS | Task | Duration | Start | Finish | Predecessors | Resources |
| --- | --- | --- | --- | --- | --- | --- | --- |
| 27 | 1.3 | **3 - Implantação** | 9d | 2022-04-27 | 2022-05-09 |  |  |
| 28 | 1.3.1 | Documentação | 7d | 2022-04-27 | 2022-05-05 | 26 | Insumos de Escritório; Computador; Vinícius Bandeira [50%]; Eduardo Candido [50%] |
| 29 | 1.3.2 | Publicação do Software | 2d | 2022-05-06 | 2022-05-09 | 28 | Analista; Computador; Data Center |
| 30 | 1.4 | Fim do projeto | 0d | 2022-05-09 | 2022-05-09 | 29, 28 | Vinícius Bandeira; Eduardo Candido; Project Owner |
